# L01

Schedule from MS Project, 2018-03-01 to 2018-09-26, costs in p..

## Calendars

- Standard: Mon-Fri 08:00-12:00, 13:00-17:00; Sat-Sun off. Exceptions (off unless hours are given): 2018-03-08 to 2018-03-11 (International Women's Day), 2018-04-29 to 2018-05-02 (May Day), 2018-05-09 (Victory Day), 2018-06-10 to 2018-06-12 (June break).

## Resources

| Resource | Group | Rate | Cost per use |
| --- | --- | --- | --- |
| Leader | Programming | 10 | 100 |
| Programmer #1 | Programming | 7 | 50 |
| Programmer #2 | Programming | 7 | 50 |
| Programmer #3 | Programming | 7 | 50 |
| Programmer #4 | Programming | 7 | 50 |
| System Analyst | Analys | 20 | 300 |
| Designer | Design | 8 | 70 |
| Technical writer | Documentation | 5 | 20 |
| Web-designer | Internet | 7 | 50 |
| 3D animator | Design | 8 | 70 |
| Multimedia correspondent | Multimedia | 3 | 20 |
| Dataworker #1 | Input Data | 2 | 10 |
| Dataworker #2 | Input Data | 2 | 10 |
| Dataworker #3 | Input Data | 2 | 10 |
| Dataworker #4 | Input Data | 2 | 10 |
| Dataworker #5 | Input Data | 2 | 10 |

## Schedule

| ID | WBS | Task | Type | Duration | Start | Finish | Predecessors | Total slack | Free slack | Resources | Work | Cost |
| --- | --- | --- | --- | --- | --- | --- | --- | --- | --- | --- | --- | --- |
| 1 | 1 | start | milestone | 0d | 2018-03-01 09:00 | 2018-03-01 09:00 |  | 71.75d | 0d |  |  |  |
| 2 | 2 | **Interface creation** |  | 112.38d | 2018-03-01 09:00 | 2018-08-16 12:00 | 1 | 0d |  |  | 560h | 5,550 |
| 3 | 2.1 | **Interface design** |  | 25.62d | 2018-03-01 09:00 | 2018-04-09 15:00 |  | 71.75d | 0d |  | 320h | 2,770 |
| 4 | 2.1.1 | Design 2D elements |  | 3w | 2018-03-01 09:00 | 2018-03-26 12:00 |  | 71.75d | 0d | Designer | 120h | 1,030 |
| 5 | 2.1.2 | Design 3D elements |  | 2w | 2018-03-01 09:00 | 2018-03-19 11:00 | 4SS | 71.75d | 0d | 3D animator | 80h | 710 |
| 6 | 2.1.3 | Creating screensaver |  | 3w | 2018-03-19 11:00 | 2018-04-09 15:00 | 5 | 71.75d |  | 3D animator | 120h | 1,030 |
| 7 | 2.2 | Interface programming |  | 3w | 2018-07-26 13:00 | 2018-08-16 12:00 | 3, 12 | 0d |  | Programmer #3; Programmer #4 | 240h | 1,780 |
| 8 | 3 | **Building base objects** |  | 85.25d | 2018-03-26 13:00 | 2018-07-31 15:00 |  | 40.88d |  |  | 2720h | 9,530 |
| 9 | 3.1 | Analys and building structure for base objects |  | 2w | 2018-03-26 13:00 | 2018-04-09 15:00 |  | 40.88d | 0d | System Analyst | 80h | 1,900 |
| 10 | 3.2 | Programming facilities for base objects |  | 3w | 2018-04-09 15:00 | 2018-05-03 15:00 | 9 | 40.88d | 0d | Programmer #3; Programmer #4 | 240h | 1,780 |
| 11 | 3.3 | Complete base objects |  | 12w | 2018-05-03 15:00 | 2018-07-31 15:00 | 10 | 40.88d |  | Dataworker #1; Dataworker #2; Dataworker #3; Dataworker #4; Dataworker #5 | 2400h | 4,850 |
| 12 | 4 | **GIS-kernel creation** |  | 97.38d | 2018-03-01 09:00 | 2018-07-26 12:00 |  | 0d |  |  | 1880h | 18,680 |
| 13 | 4.1 | Analys and design kernel |  | 3w | 2018-03-01 09:00 | 2018-03-26 12:00 |  | 0d |  | Leader; System Analyst | 240h | 4,000 |
| 14 | 4.2 | Building kernel model |  | 5.12w | 2018-03-26 13:00 | 2018-05-04 09:00 | 13 | 0d |  | Leader; Programmer #1 | 400h | 3,550 |
| 15 | 4.3 | Testing kernel model |  | 1w | 2018-05-04 09:00 | 2018-05-14 09:00 | 14 | 0d |  | Programmer #1 | 40h | 330 |
| 16 | 4.4 | Creating workers for kernel |  | 10.25w | 2018-05-14 09:00 | 2018-07-26 12:00 | 15 | 0d |  | Leader; Programmer #1; Programmer #2 | 1200h | 9,800 |
| 17 | 5 | Complete multimedia |  | 6w | 2018-04-09 15:00 | 2018-05-28 11:00 | 3 | 85.25d |  | Multimedia correspondent | 240h | 740 |
| 18 | 6 | Creating Help system |  | 2w | 2018-08-27 16:00 | 2018-09-11 09:00 | 7 | 11.5d |  | Technical writer | 80h | 420 |
| 19 | 7 | **Creating User's guide** |  | 17.38d | 2018-08-02 13:00 | 2018-08-27 16:00 | 7FS-10d | 0d |  |  | 160h | 1,010 |
| 20 | 7.1 | Develop design management |  | 1w | 2018-08-02 13:00 | 2018-08-09 14:00 |  | 0d |  | Designer | 40h | 390 |
| 21 | 7.2 | Writing User's Guide |  | 3w | 2018-08-06 13:00 | 2018-08-27 16:00 | 20SS+2d | 0d |  | Technical writer | 120h | 620 |
| 22 | 8 | **Website creation and support** |  | 23.62d | 2018-08-06 13:00 | 2018-09-07 09:00 |  | 0d |  |  | 248h | 2,106 |
| 23 | 8.1 | Developing site's structure |  | 1d | 2018-08-06 13:00 | 2018-08-07 12:00 | 21SS | 0d |  | Web-designer | 8h | 106 |
| 24 | 8.2 | Design site |  | 1.4w | 2018-08-07 13:00 | 2018-08-16 15:00 | 23 | 0d |  | Web-designer; Designer; 3D animator | 120h | 1,110 |
| 25 | 8.3 | Complete site |  | 3w | 2018-08-16 15:00 | 2018-09-07 09:00 | 24 | 0d |  | Web-designer | 120h | 890 |
| 26 | 9 | Testing site |  | 4.1w | 2018-08-29 09:00 | 2018-09-26 14:00 | 22FS-7d | 0d |  | Leader; Programmer #1; Programmer #2 | 480h | 4,040 |
| 27 | 10 | Site commission - finish | milestone | 0d | 2018-09-26 14:00 | 2018-09-26 14:00 | 26 | 0d |  |  |  |  |

| ID | WBS | Task | Duration | Start | Finish | Total slack | Constraint | Resources | Work | Cost |
| --- | --- | --- | --- | --- | --- | --- | --- | --- | --- | --- |
| 28 | 11 | **Project meetings** | 132.12d | 2018-03-07 09:00 | 2018-09-19 10:00 | 5.38d |  |  | 189h | 18,657 |
| 29 | 11.1 | Project meetings 1 | 1h | 2018-03-07 09:00 | 2018-03-07 10:00 | 137.38d | start no earlier than 2018-03-07 09:00 | 3D animator; Designer; Leader; Multimedia correspondent; System Analyst; Technical writer; Web-designer | 7h | 691 |
| 30 | 11.2 | Project meetings 2 | 1h | 2018-03-14 09:00 | 2018-03-14 10:00 | 134.38d | start no earlier than 2018-03-14 09:00 | 3D animator; Designer; Leader; Multimedia correspondent; System Analyst; Technical writer; Web-designer | 7h | 691 |
| 31 | 11.3 | Project meetings 3 | 1h | 2018-03-21 09:00 | 2018-03-21 10:00 | 129.38d | start no earlier than 2018-03-21 09:00 | 3D animator; Designer; Leader; Multimedia correspondent; System Analyst; Technical writer; Web-designer | 7h | 691 |
| 32 | 11.4 | Project meetings 4 | 1h | 2018-03-28 09:00 | 2018-03-28 10:00 | 124.38d | start no earlier than 2018-03-28 09:00 | 3D animator; Designer; Leader; Multimedia correspondent; System Analyst; Technical writer; Web-designer | 7h | 691 |
| 33 | 11.5 | Project meetings 5 | 1h | 2018-04-04 09:00 | 2018-04-04 10:00 | 119.38d | start no earlier than 2018-04-04 09:00 | 3D animator; Designer; Leader; Multimedia correspondent; System Analyst; Technical writer; Web-designer | 7h | 691 |
| 34 | 11.6 | Project meetings 6 | 1h | 2018-04-11 09:00 | 2018-04-11 10:00 | 114.38d | start no earlier than 2018-04-11 09:00 | 3D animator; Designer; Leader; Multimedia correspondent; System Analyst; Technical writer; Web-designer | 7h | 691 |
| 35 | 11.7 | Project meetings 7 | 1h | 2018-04-18 09:00 | 2018-04-18 10:00 | 109.38d | start no earlier than 2018-04-18 09:00 | 3D animator; Designer; Leader; Multimedia correspondent; System Analyst; Technical writer; Web-designer | 7h | 691 |
| 36 | 11.8 | Project meetings 8 | 1h | 2018-04-25 09:00 | 2018-04-25 10:00 | 104.38d | start no earlier than 2018-04-25 09:00 | 3D animator; Designer; Leader; Multimedia correspondent; System Analyst; Technical writer; Web-designer | 7h | 691 |
| 37 | 11.9 | Project meetings 9 | 1h | 2018-05-16 09:00 | 2018-05-16 10:00 | 93.38d | start no earlier than 2018-05-16 09:00 | 3D animator; Designer; Leader; Multimedia correspondent; System Analyst; Technical writer; Web-designer | 7h | 691 |
| 38 | 11.10 | Project meetings 10 | 1h | 2018-05-23 09:00 | 2018-05-23 10:00 | 88.38d | start no earlier than 2018-05-23 09:00 | 3D animator; Designer; Leader; Multimedia correspondent; System Analyst; Technical writer; Web-designer | 7h | 691 |
| 39 | 11.11 | Project meetings 11 | 1h | 2018-05-30 09:00 | 2018-05-30 10:00 | 83.38d | start no earlier than 2018-05-30 09:00 | 3D animator; Designer; Leader; Multimedia correspondent; System Analyst; Technical writer; Web-designer | 7h | 691 |
| 40 | 11.12 | Project meetings 12 | 1h | 2018-06-06 09:00 | 2018-06-06 10:00 | 78.38d | start no earlier than 2018-06-06 09:00 | 3D animator; Designer; Leader; Multimedia correspondent; System Analyst; Technical writer; Web-designer | 7h | 691 |
| 41 | 11.13 | Project meetings 13 | 1h | 2018-06-13 09:00 | 2018-06-13 10:00 | 75.38d | start no earlier than 2018-06-13 09:00 | 3D animator; Designer; Leader; Multimedia correspondent; System Analyst; Technical writer; Web-designer | 7h | 691 |
| 42 | 11.14 | Project meetings 14 | 1h | 2018-06-20 09:00 | 2018-06-20 10:00 | 70.38d | start no earlier than 2018-06-20 09:00 | 3D animator; Designer; Leader; Multimedia correspondent; System Analyst; Technical writer; Web-designer | 7h | 691 |
| 43 | 11.15 | Project meetings 15 | 1h | 2018-06-27 09:00 | 2018-06-27 10:00 | 65.38d | start no earlier than 2018-06-27 09:00 | 3D animator; Designer; Leader; Multimedia correspondent; System Analyst; Technical writer; Web-designer | 7h | 691 |
| 44 | 11.16 | Project meetings 16 | 1h | 2018-07-04 09:00 | 2018-07-04 10:00 | 60.38d | start no earlier than 2018-07-04 09:00 | 3D animator; Designer; Leader; Multimedia correspondent; System Analyst; Technical writer; Web-designer | 7h | 691 |
| 45 | 11.17 | Project meetings 17 | 1h | 2018-07-11 09:00 | 2018-07-11 10:00 | 55.38d | start no earlier than 2018-07-11 09:00 | 3D animator; Designer; Leader; Multimedia correspondent; System Analyst; Technical writer; Web-designer | 7h | 691 |
| 46 | 11.18 | Project meetings 18 | 1h | 2018-07-18 09:00 | 2018-07-18 10:00 | 50.38d | start no earlier than 2018-07-18 09:00 | 3D animator; Designer; Leader; Multimedia correspondent; System Analyst; Technical writer; Web-designer | 7h | 691 |
| 47 | 11.19 | Project meetings 19 | 1h | 2018-07-25 09:00 | 2018-07-25 10:00 | 45.38d | start no earlier than 2018-07-25 09:00 | 3D animator; Designer; Leader; Multimedia correspondent; System Analyst; Technical writer; Web-designer | 7h | 691 |
| 48 | 11.20 | Project meetings 20 | 1h | 2018-08-01 09:00 | 2018-08-01 10:00 | 40.38d | start no earlier than 2018-08-01 09:00 | 3D animator; Designer; Leader; Multimedia correspondent; System Analyst; Technical writer; Web-designer | 7h | 691 |
| 49 | 11.21 | Project meetings 21 | 1h | 2018-08-08 09:00 | 2018-08-08 10:00 | 35.38d | start no earlier than 2018-08-08 09:00 | 3D animator; Designer; Leader; Multimedia correspondent; System Analyst; Technical writer; Web-designer | 7h | 691 |
| 50 | 11.22 | Project meetings 22 | 1h | 2018-08-15 09:00 | 2018-08-15 10:00 | 30.38d | start no earlier than 2018-08-15 09:00 | 3D animator; Designer; Leader; Multimedia correspondent; System Analyst; Technical writer; Web-designer | 7h | 691 |
| 51 | 11.23 | Project meetings 23 | 1h | 2018-08-22 09:00 | 2018-08-22 10:00 | 25.38d | start no earlier than 2018-08-22 09:00 | 3D animator; Designer; Leader; Multimedia correspondent; System Analyst; Technical writer; Web-designer | 7h | 691 |
| 52 | 11.24 | Project meetings 24 | 1h | 2018-08-29 09:00 | 2018-08-29 10:00 | 20.38d | start no earlier than 2018-08-29 09:00 | 3D animator; Designer; Leader; Multimedia correspondent; System Analyst; Technical writer; Web-designer | 7h | 691 |
| 53 | 11.25 | Project meetings 25 | 1h | 2018-09-05 09:00 | 2018-09-05 10:00 | 15.38d | start no earlier than 2018-09-05 09:00 | 3D animator; Designer; Leader; Multimedia correspondent; System Analyst; Technical writer; Web-designer | 7h | 691 |
| 54 | 11.26 | Project meetings 26 | 1h | 2018-09-12 09:00 | 2018-09-12 10:00 | 10.38d | start no earlier than 2018-09-12 09:00 | 3D animator; Designer; Leader; Multimedia correspondent; System Analyst; Technical writer; Web-designer | 7h | 691 |
| 55 | 11.27 | Project meetings 27 | 1h | 2018-09-19 09:00 | 2018-09-19 10:00 | 5.38d | start no earlier than 2018-09-19 09:00 | 3D animator; Designer; Leader; Multimedia correspondent; System Analyst; Technical writer; Web-designer | 7h | 691 |
