Schedule from MS Project, 2018-03-01 to 2018-08-30, status date 2018-05-10, costs in p., A marks actual dates.

## Calendars

- Standard: Mon-Fri 08:00-12:00, 13:00-17:00; Sat-Sun off. Exceptions (off unless hours are given): 2018-03-08 to 2018-03-11 (International Women's Day), 2018-04-29 to 2018-05-02 (May Day), 2018-05-09 (Victory Day), 2018-06-10 to 2018-06-12 (June break).

## Resources

| Resource | Group | Rate | Cost per use |
| --- | --- | --- | --- |
| Leader | Programming | 10 | 100 |
| Programmer #1 | Programming | 8.4 | 50 |
| Programmer #2 | Programming | 8.4 | 50 |
| Programmer #3 | Programming | 7 | 50 |
| Programmer #4 | Programming | 7 | 50 |
| System Analyst | Analys | 20 | 300 |
| Designer | Design | 8 | 70 |
| Technical writer | Documentation | 5 | 20 |
| Web-designer | Internet | 7 | 50 |
| 3D animator | Design | 8 | 70 |
| Multimedia correspondent | Multimedia | 3 | 20 |
| Dataworker #1 | Input Data | 2 | 10 |
| Dataworker #2 | Input Data | 2 | 10 |
| Dataworker #3 | Input Data | 2 | 10 |
| Dataworker #4 | Input Data | 2 | 10 |
| Dataworker #5 | Input Data | 2 | 10 |
| Additional Server |  | 2 |  |

## Schedule

| ID | WBS | Task | Type | Duration | Start | Finish | Predecessors | Complete | Remaining | Baseline start | Baseline finish | Baseline duration | Total slack | Free slack | Resources | Work | Actual work | Cost | Baseline cost | Actual cost |
| --- | --- | --- | --- | --- | --- | --- | --- | --- | --- | --- | --- | --- | --- | --- | --- | --- | --- | --- | --- | --- |
| 1 | 1 | start | milestone | 0d | 2018-03-01 09:00 A | 2018-03-01 09:00 A |  | 100% |  | 2018-03-01 09:00 | 2018-03-01 09:00 | 0d |  |  |  |  |  |  |  |  |
| 2 | 2 | **Interface creation** |  | 92.98d | 2018-03-01 09:00 A | 2018-07-20 08:49 | 1 | 73% | 25.36d | 2018-03-01 09:00 | 2018-07-20 08:49 | 92.98d | 0d |  |  | 560h | 320h | 5,550 | 5,550 | 3,500 |
| 3 | 2.1 | **Interface design** |  | 25.62d | 2018-03-01 09:00 A | 2018-04-09 15:00 A |  | 100% |  | 2018-03-01 09:00 | 2018-04-09 15:00 | 25.62d |  |  |  | 320h | 320h | 2,770 | 2,770 | 2,770 |
| 4 | 2.1.1 | Design 2D elements |  | 3w | 2018-03-01 09:00 A | 2018-03-26 12:00 A |  | 100% |  | 2018-03-01 09:00 | 2018-03-26 12:00 | 3w |  |  | Designer | 120h | 120h | 1,030 | 1,030 | 1,030 |
| 5 | 2.1.2 | Design 3D elements |  | 2w | 2018-03-01 09:00 A | 2018-03-19 11:00 A | 4SS | 100% |  | 2018-03-01 09:00 | 2018-03-19 11:00 | 2w |  |  | 3D animator | 80h | 80h | 710 | 710 | 710 |
| 6 | 2.1.3 | Creating screensaver |  | 3w | 2018-03-19 11:00 A | 2018-04-09 15:00 A | 5 | 100% |  | 2018-03-19 11:00 | 2018-04-09 15:00 | 3w |  |  | 3D animator | 120h | 120h | 1,030 | 1,030 | 1,030 |
| 7 | 2.2 | Interface programming |  | 3w | 2018-06-29 08:49 | 2018-07-20 08:49 | 3, 12 |  |  | 2018-06-29 08:49 | 2018-07-20 08:49 | 3w | 0d |  | Programmer #3; Programmer #4 | 240h |  | 1,780 | 1,780 |  |
| 8 | 3 | **Building base objects** |  | 84.23d | 2018-03-26 13:00 A | 2018-07-30 14:49 |  | 24% | 64.02d | 2018-03-26 13:00 | 2018-08-01 15:49 | 86.35d | 22.5d |  |  | 2720h | 351.91h | 9,530 | 9,530 | 3,313.82 |
| 9 | 3.1 | Analys and building structure for base objects |  | 2w | 2018-03-26 13:00 A | 2018-04-09 15:00 A |  | 100% |  | 2018-03-26 13:00 | 2018-04-09 15:00 | 2w |  |  | System Analyst | 80h | 80h | 1,900 | 1,900 | 1,900 |
| 10 | 3.2 | Programming facilities for base objects |  | 3w | 2018-04-10 15:49 A | 2018-05-04 15:49 | 9 | 40% | 1.8w | 2018-04-10 15:49 | 2018-05-04 15:49 | 3w | 24.77d | 0d | Programmer #3; Programmer #4 | 240h | 96h | 1,780 | 1,780 | 772 |
| 11 | 3.3 | Complete base objects |  | 12w | 2018-04-20 09:00 A | 2018-07-30 14:49 | 10 | 7% | 11.12w | 2018-05-04 15:49 | 2018-08-01 15:49 | 12w | 22.5d |  | Dataworker #1; Dataworker #2; Dataworker #3; Dataworker #4; Dataworker #5 | 2400h | 175.91h | 4,850 | 4,850 | 401.82 |
| 12 | 4 | **GIS-kernel creation** |  | 77.98d | 2018-03-01 09:00 A | 2018-06-29 08:49 |  | 59% | 32.31d | 2018-03-01 09:00 | 2018-06-29 08:49 | 77.98d | 0d |  |  | 1915.18h | 1126.73h | 19,192.25 | 18,616.46 | 12,468.64 |
| 13 | 4.1 | Analys and design kernel |  | 3w | 2018-03-01 09:00 A | 2018-03-26 12:00 A |  | 100% |  | 2018-03-01 09:00 | 2018-03-26 12:00 | 3w |  |  | Leader; System Analyst | 240h | 240h | 4,000 | 4,000 | 4,000 |
| 14 | 4.2 | Building kernel model |  | 2.9w | 2018-03-26 13:00 A | 2018-04-15 18:00 A | 13 | 100% |  | 2018-03-26 13:00 | 2018-04-09 13:49 | 2.02w |  |  | Leader; Programmer #1; Programmer #2; Programmer #3; Programmer #4 | 435.18h | 435.18h | 3,688.28 | 3,336.46 | 3,688.28 |
| 15 | 4.3 | Testing kernel model |  | 0.25w | 2018-04-09 13:49 A | 2018-04-10 15:49 A | 14 | 100% |  | 2018-04-09 13:49 | 2018-04-10 15:49 | 0.25w |  |  | Programmer #1; Programmer #2; Programmer #3; Programmer #4 | 40h | 40h | 480 | 480 | 480 |
| 16 | 4.4 | Creating workers for kernel |  | 10.25w | 2018-04-10 15:49 A | 2018-06-29 08:49 | 15 | 34% | 6.8w | 2018-04-10 15:49 | 2018-06-29 08:49 | 10.25w | 0d |  | Leader; Programmer #1; Programmer #2 | 1200h | 411.55h | 10,023.98 | 9,800 | 3,710.36 |
| 17 | 5 | Complete multimedia |  | 6w | 2018-04-09 15:00 A | 2018-05-28 11:00 | 3 | 60% | 2.4w | 2018-04-09 15:00 | 2018-05-28 11:00 | 6w | 65.85d |  | Multimedia correspondent | 240h | 144h | 740 | 740 | 452 |
| 18 | 6 | Creating Help system |  | 2w | 2018-07-31 11:49 | 2018-08-14 14:49 | 7 |  |  | 2018-07-31 11:49 | 2018-08-14 14:49 | 2w | 11.5d |  | Technical writer | 80h |  | 420 | 420 |  |
| 19 | 7 | **Creating User's guide** |  | 17.38d | 2018-07-06 08:49 | 2018-07-31 11:49 | 7FS-10d |  |  | 2018-07-06 08:49 | 2018-07-31 11:49 | 17.38d | 0d |  |  | 160h |  | 1,010 | 1,010 |  |
| 20 | 7.1 | Develop design management |  | 1w | 2018-07-06 08:49 | 2018-07-13 09:49 |  |  |  | 2018-07-06 08:49 | 2018-07-13 09:49 | 1w | 0d |  | Designer | 40h |  | 390 | 390 |  |
| 21 | 7.2 | Writing User's Guide |  | 3w | 2018-07-10 08:49 | 2018-07-31 11:49 | 20SS+2d |  |  | 2018-07-10 08:49 | 2018-07-31 11:49 | 3w | 0d |  | Technical writer | 120h |  | 620 | 620 |  |
| 22 | 8 | **Website creation and support** |  | 23.62d | 2018-07-10 08:49 | 2018-08-10 14:49 |  |  |  | 2018-07-10 08:49 | 2018-08-10 14:49 | 23.62d | 0d |  |  | 248h |  | 2,106 | 2,106 |  |
| 23 | 8.1 | Developing site's structure |  | 1d | 2018-07-10 08:49 | 2018-07-11 08:49 | 21SS |  |  | 2018-07-10 08:49 | 2018-07-11 08:49 | 1d | 0d |  | Web-designer | 8h |  | 106 | 106 |  |
| 24 | 8.2 | Design site |  | 1.4w | 2018-07-11 08:49 | 2018-07-20 10:49 | 23 |  |  | 2018-07-11 08:49 | 2018-07-20 10:49 | 1.4w | 0d |  | Web-designer; Designer; 3D animator | 120h |  | 1,110 | 1,110 |  |
| 25 | 8.3 | Complete site |  | 3w | 2018-07-20 10:49 | 2018-08-10 14:49 | 24 |  |  | 2018-07-20 10:49 | 2018-08-10 14:49 | 3w | 0d |  | Web-designer | 120h |  | 890 | 890 |  |
| 26 | 9 | Testing site |  | 4.1w | 2018-08-01 14:49 | 2018-08-30 09:49 | 22FS-7d |  |  | 2018-08-01 14:49 | 2018-08-30 09:49 | 4.1w | 0d |  | Leader; Programmer #1; Programmer #2 | 480h |  | 3,940 | 4,040 |  |
| 27 | 10 | Site commission - finish | milestone | 0d | 2018-08-30 09:49 | 2018-08-30 09:49 | 26 |  |  | 2018-08-30 09:49 | 2018-08-30 09:49 | 0d | 0d |  |  |  |  |  |  |  |

| ID | WBS | Task | Duration | Start | Finish | Complete | Remaining | Baseline start | Baseline finish | Baseline duration | Total slack | Constraint | Resources | Work | Actual work | Cost | Baseline cost | Actual cost |
| --- | --- | --- | --- | --- | --- | --- | --- | --- | --- | --- | --- | --- | --- | --- | --- | --- | --- | --- |
| 28 | 11 | **Project meetings** | 117.12d | 2018-03-07 09:00 A | 2018-08-29 10:00 | 33% | 78.08d | 2018-03-07 09:00 | 2018-08-29 10:00 | 117.12d | 0.98d |  |  | 168h | 56h | 1,464 | 1,464 | 488 |
| 29 | 11.1 | Project meetings 1 | 1h | 2018-03-07 09:00 A | 2018-03-07 10:00 A | 100% |  | 2018-03-07 09:00 | 2018-03-07 10:00 | 1h |  | start no earlier than 2018-03-07 09:00 | 3D animator; Designer; Leader; Multimedia correspondent; System Analyst; Technical writer; Web-designer | 7h | 7h | 61 | 61 | 61 |
| 30 | 11.2 | Project meetings 2 | 1h | 2018-03-14 09:00 A | 2018-03-14 10:00 A | 100% |  | 2018-03-14 09:00 | 2018-03-14 10:00 | 1h |  | start no earlier than 2018-03-14 09:00 | 3D animator; Designer; Leader; Multimedia correspondent; System Analyst; Technical writer; Web-designer | 7h | 7h | 61 | 61 | 61 |
| 31 | 11.3 | Project meetings 3 | 1h | 2018-03-21 09:00 A | 2018-03-21 10:00 A | 100% |  | 2018-03-21 09:00 | 2018-03-21 10:00 | 1h |  | start no earlier than 2018-03-21 09:00 | 3D animator; Designer; Leader; Multimedia correspondent; System Analyst; Technical writer; Web-designer | 7h | 7h | 61 | 61 | 61 |
| 32 | 11.4 | Project meetings 4 | 1h | 2018-03-28 09:00 A | 2018-03-28 10:00 A | 100% |  | 2018-03-28 09:00 | 2018-03-28 10:00 | 1h |  | start no earlier than 2018-03-28 09:00 | 3D animator; Designer; Leader; Multimedia correspondent; System Analyst; Technical writer; Web-designer | 7h | 7h | 61 | 61 | 61 |
| 33 | 11.5 | Project meetings 5 | 1h | 2018-04-04 09:00 A | 2018-04-04 10:00 A | 100% |  | 2018-04-04 09:00 | 2018-04-04 10:00 | 1h |  | start no earlier than 2018-04-04 09:00 | 3D animator; Designer; Leader; Multimedia correspondent; System Analyst; Technical writer; Web-designer | 7h | 7h | 61 | 61 | 61 |
| 34 | 11.6 | Project meetings 6 | 1h | 2018-04-11 09:00 A | 2018-04-11 10:00 A | 100% |  | 2018-04-11 09:00 | 2018-04-11 10:00 | 1h |  | start no earlier than 2018-04-11 09:00 | 3D animator; Designer; Leader; Multimedia correspondent; System Analyst; Technical writer; Web-designer | 7h | 7h | 61 | 61 | 61 |
| 35 | 11.7 | Project meetings 7 | 1h | 2018-04-18 09:00 A | 2018-04-18 10:00 A | 100% |  | 2018-04-18 09:00 | 2018-04-18 10:00 | 1h |  | start no earlier than 2018-04-18 09:00 | 3D animator; Designer; Leader; Multimedia correspondent; System Analyst; Technical writer; Web-designer | 7h | 7h | 61 | 61 | 61 |
| 36 | 11.8 | Project meetings 8 | 1h | 2018-04-25 09:00 A | 2018-04-25 10:00 A | 100% |  | 2018-04-25 09:00 | 2018-04-25 10:00 | 1h |  | start no earlier than 2018-04-25 09:00 | 3D animator; Designer; Leader; Multimedia correspondent; System Analyst; Technical writer; Web-designer | 7h | 7h | 61 | 61 | 61 |
| 37 | 11.9 | Project meetings 9 | 1h | 2018-05-16 09:00 | 2018-05-16 10:00 |  |  | 2018-05-16 09:00 | 2018-05-16 10:00 | 1h | 73.98d | start no earlier than 2018-05-16 09:00 | 3D animator; Designer; Leader; Multimedia correspondent; System Analyst; Technical writer; Web-designer | 7h |  | 61 | 61 |  |
| 38 | 11.10 | Project meetings 10 | 1h | 2018-05-23 09:00 | 2018-05-23 10:00 |  |  | 2018-05-23 09:00 | 2018-05-23 10:00 | 1h | 68.98d | start no earlier than 2018-05-23 09:00 | 3D animator; Designer; Leader; Multimedia correspondent; System Analyst; Technical writer; Web-designer | 7h |  | 61 | 61 |  |
| 39 | 11.11 | Project meetings 11 | 1h | 2018-05-30 09:00 | 2018-05-30 10:00 |  |  | 2018-05-30 09:00 | 2018-05-30 10:00 | 1h | 63.98d | start no earlier than 2018-05-30 09:00 | 3D animator; Designer; Leader; Multimedia correspondent; System Analyst; Technical writer; Web-designer | 7h |  | 61 | 61 |  |
| 40 | 11.12 | Project meetings 12 | 1h | 2018-06-06 09:00 | 2018-06-06 10:00 |  |  | 2018-06-06 09:00 | 2018-06-06 10:00 | 1h | 58.98d | start no earlier than 2018-06-06 09:00 | 3D animator; Designer; Leader; Multimedia correspondent; System Analyst; Technical writer; Web-designer | 7h |  | 61 | 61 |  |
| 41 | 11.13 | Project meetings 13 | 1h | 2018-06-13 09:00 | 2018-06-13 10:00 |  |  | 2018-06-13 09:00 | 2018-06-13 10:00 | 1h | 55.98d | start no earlier than 2018-06-13 09:00 | 3D animator; Designer; Leader; Multimedia correspondent; System Analyst; Technical writer; Web-designer | 7h |  | 61 | 61 |  |
| 42 | 11.14 | Project meetings 14 | 1h | 2018-06-20 09:00 | 2018-06-20 10:00 |  |  | 2018-06-20 09:00 | 2018-06-20 10:00 | 1h | 50.98d | start no earlier than 2018-06-20 09:00 | 3D animator; Designer; Leader; Multimedia correspondent; System Analyst; Technical writer; Web-designer | 7h |  | 61 | 61 |  |
| 43 | 11.15 | Project meetings 15 | 1h | 2018-06-27 09:00 | 2018-06-27 10:00 |  |  | 2018-06-27 09:00 | 2018-06-27 10:00 | 1h | 45.98d | start no earlier than 2018-06-27 09:00 | 3D animator; Designer; Leader; Multimedia correspondent; System Analyst; Technical writer; Web-designer | 7h |  | 61 | 61 |  |
| 44 | 11.16 | Project meetings 16 | 1h | 2018-07-04 09:00 | 2018-07-04 10:00 |  |  | 2018-07-04 09:00 | 2018-07-04 10:00 | 1h | 40.98d | start no earlier than 2018-07-04 09:00 | 3D animator; Designer; Leader; Multimedia correspondent; System Analyst; Technical writer; Web-designer | 7h |  | 61 | 61 |  |
| 45 | 11.17 | Project meetings 17 | 1h | 2018-07-11 09:00 | 2018-07-11 10:00 |  |  | 2018-07-11 09:00 | 2018-07-11 10:00 | 1h | 35.98d | start no earlier than 2018-07-11 09:00 | 3D animator; Designer; Leader; Multimedia correspondent; System Analyst; Technical writer; Web-designer | 7h |  | 61 | 61 |  |
| 46 | 11.18 | Project meetings 18 | 1h | 2018-07-18 09:00 | 2018-07-18 10:00 |  |  | 2018-07-18 09:00 | 2018-07-18 10:00 | 1h | 30.98d | start no earlier than 2018-07-18 09:00 | 3D animator; Designer; Leader; Multimedia correspondent; System Analyst; Technical writer; Web-designer | 7h |  | 61 | 61 |  |
| 47 | 11.19 | Project meetings 19 | 1h | 2018-07-25 09:00 | 2018-07-25 10:00 |  |  | 2018-07-25 09:00 | 2018-07-25 10:00 | 1h | 25.98d | start no earlier than 2018-07-25 09:00 | 3D animator; Designer; Leader; Multimedia correspondent; System Analyst; Technical writer; Web-designer | 7h |  | 61 | 61 |  |
| 48 | 11.20 | Project meetings 20 | 1h | 2018-08-01 09:00 | 2018-08-01 10:00 |  |  | 2018-08-01 09:00 | 2018-08-01 10:00 | 1h | 20.98d | start no earlier than 2018-08-01 09:00 | 3D animator; Designer; Leader; Multimedia correspondent; System Analyst; Technical writer; Web-designer | 7h |  | 61 | 61 |  |
| 49 | 11.21 | Project meetings 21 | 1h | 2018-08-08 09:00 | 2018-08-08 10:00 |  |  | 2018-08-08 09:00 | 2018-08-08 10:00 | 1h | 15.98d | start no earlier than 2018-08-08 09:00 | 3D animator; Designer; Leader; Multimedia correspondent; System Analyst; Technical writer; Web-designer | 7h |  | 61 | 61 |  |
| 50 | 11.22 | Project meetings 22 | 1h | 2018-08-15 09:00 | 2018-08-15 10:00 |  |  | 2018-08-15 09:00 | 2018-08-15 10:00 | 1h | 10.98d | start no earlier than 2018-08-15 09:00 | 3D animator; Designer; Leader; Multimedia correspondent; System Analyst; Technical writer; Web-designer | 7h |  | 61 | 61 |  |
| 51 | 11.23 | Project meetings 23 | 1h | 2018-08-22 09:00 | 2018-08-22 10:00 |  |  | 2018-08-22 09:00 | 2018-08-22 10:00 | 1h | 5.98d | start no earlier than 2018-08-22 09:00 | 3D animator; Designer; Leader; Multimedia correspondent; System Analyst; Technical writer; Web-designer | 7h |  | 61 | 61 |  |
| 52 | 11.24 | Project meetings 24 | 1h | 2018-08-29 09:00 | 2018-08-29 10:00 |  |  | 2018-08-29 09:00 | 2018-08-29 10:00 | 1h | 0.98d | start no earlier than 2018-08-29 09:00 | 3D animator; Designer; Leader; Multimedia correspondent; System Analyst; Technical writer; Web-designer | 7h |  | 61 | 61 |  |
