# L01

Schedule from MS Project, 2018-03-01 to 2018-08-24, status date 2018-05-10, costs in p., A marks actual dates.

## Calendars

- Standard: Mon-Fri 08:00-12:00, 13:00-17:00; Sat-Sun off. Exceptions (off unless hours are given): 2018-03-08 to 2018-03-11 (International Women's Day), 2018-04-29 to 2018-05-02 (May Day), 2018-05-09 (Victory Day), 2018-06-10 to 2018-06-12 (June break).

## Resources

| Resource | Group | Rate | Cost per use |
| --- | --- | --- | --- |
| Leader | Programming | 10 | 100 |
| Programmer #1 | Programming | 8.4 | 50 |
| Programmer #2 | Programming | 8.4 | 50 |
| Programmer #3 | Programming | 7 | 50 |
| Programmer #4 | Programming | 7 | 50 |
| System Analyst | Analys | 20 | 300 |
| Designer | Design | 8 | 70 |
| Technical writer | Documentation | 5 | 20 |
| Web-designer | Internet | 7 | 50 |
| 3D animator | Design | 8 | 70 |
| Multimedia correspondent | Multimedia | 3 | 20 |
| Dataworker #1 | Input Data | 2 | 10 |
| Dataworker #2 | Input Data | 2 | 10 |
| Dataworker #3 | Input Data | 2 | 10 |
| Dataworker #4 | Input Data | 2 | 10 |
| Dataworker #5 | Input Data | 2 | 10 |
| Additional Server |  | 2 |  |

## Schedule

| ID | WBS | Task | Type | Duration | Start | Finish | Predecessors | Complete | Remaining | Baseline start | Baseline finish | Baseline duration | Total slack | Free slack | Resources | Work | Actual work | Cost | Baseline cost | Actual cost |
| --- | --- | --- | --- | --- | --- | --- | --- | --- | --- | --- | --- | --- | --- | --- | --- | --- | --- | --- | --- | --- |
| 1 | 1 | start | milestone | 0d | 2018-03-01 09:00 A | 2018-03-01 09:00 A |  | 100% |  | 2018-03-01 09:00 | 2018-03-01 09:00 | 0d |  |  |  |  |  |  |  |  |
| 2 | 2 | **Analys** |  | 15.38d | 2018-03-01 09:00 A | 2018-03-26 12:00 A |  | 100% |  |  |  |  |  |  |  | 361h | 361h | 6,720 |  | 6,720 |
| 3 | 2.1 | Analys and building structure for base objects |  | 3.02w | 2018-03-01 09:00 A | 2018-03-26 12:00 A |  | 100% |  | 2018-03-26 13:00 | 2018-04-09 15:00 | 2w |  |  | System Analyst | 121h | 121h | 2,720 | 1,900 | 2,720 |
| 4 | 2.2 | Analys and design kernel |  | 3w | 2018-03-01 09:00 A | 2018-03-26 12:00 A |  | 100% |  | 2018-03-01 09:00 | 2018-03-26 12:00 | 3w |  |  | Leader; System Analyst | 240h | 240h | 4,000 | 4,000 | 4,000 |
| 5 | 3 | **Design** |  | 89.1d | 2018-03-01 09:00 A | 2018-07-16 09:49 |  | 80% | 17.82d |  |  |  | 0d |  |  | 480h | 320h | 4,270 |  | 2,770 |
| 6 | 3.1 | **Interface design** |  | 25.62d | 2018-03-01 09:00 A | 2018-04-09 15:00 A |  | 100% |  | 2018-03-01 09:00 | 2018-04-09 15:00 | 25.62d |  |  |  | 320h | 320h | 2,770 | 2,770 | 2,770 |
| 7 | 3.1.1 | Design 2D elements |  | 3w | 2018-03-01 09:00 A | 2018-03-26 12:00 A |  | 100% |  | 2018-03-01 09:00 | 2018-03-26 12:00 | 3w |  |  | Designer | 120h | 120h | 1,030 | 1,030 | 1,030 |
| 8 | 3.1.2 | Design 3D elements |  | 2w | 2018-03-01 09:00 A | 2018-03-19 11:00 A | 7SS | 100% |  | 2018-03-01 09:00 | 2018-03-19 11:00 | 2w |  |  | 3D animator | 80h | 80h | 710 | 710 | 710 |
| 9 | 3.1.3 | Creating screensaver |  | 3w | 2018-03-19 11:00 A | 2018-04-09 15:00 A | 8 | 100% |  | 2018-03-19 11:00 | 2018-04-09 15:00 | 3w |  |  | 3D animator | 120h | 120h | 1,030 | 1,030 | 1,030 |
| 10 | 3.2 | Develop design management |  | 1w | 2018-03-26 13:00 | 2018-04-02 14:00 |  |  |  | 2018-07-06 08:49 | 2018-07-13 09:49 | 1w | 65.6d |  | Designer | 40h |  | 390 | 390 |  |
| 11 | 3.3 | Design site |  | 1w | 2018-07-09 08:49 | 2018-07-16 09:49 | 22 |  |  | 2018-07-11 08:49 | 2018-07-20 10:49 | 1.4w | 0d |  | Web-designer; Designer; 3D animator | 120h |  | 1,110 | 1,110 |  |
| 12 | 4 | **GIS-kernel creation** |  | 62.6d | 2018-03-26 13:00 A | 2018-06-29 08:49 |  | 48% | 32.35d | 2018-03-01 09:00 | 2018-06-29 08:49 | 77.98d | 0d |  |  | 1635.18h | 846.73h | 14,712.25 | 18,616.46 | 7,878.64 |
| 13 | 4.1 | Building kernel model |  | 2.9w | 2018-03-26 13:00 A | 2018-04-15 18:00 A | 4 | 100% |  | 2018-03-26 13:00 | 2018-04-09 13:49 | 2.02w |  |  | Leader; Programmer #1; Programmer #2; Programmer #3; Programmer #4 | 435.18h | 435.18h | 3,688.28 | 3,336.46 | 3,688.28 |
| 14 | 4.2 | Creating workers for kernel |  | 10.25w | 2018-04-10 15:49 A | 2018-06-29 08:49 | 25 | 34% | 6.8w | 2018-04-10 15:49 | 2018-06-29 08:49 | 10.25w | 0d |  | Leader; Programmer #1; Programmer #2 | 1200h | 411.55h | 10,023.98 | 9,800 | 3,710.36 |
| 15 | 5 | **Programming** |  | 72.88d | 2018-04-10 15:49 A | 2018-07-30 14:49 |  | 12% | 64.46d |  |  |  | 18.38d |  |  | 2880h | 271.91h | 10,410 |  | 1,313.82 |
| 16 | 5.1 | **Interface creation** |  | 15d | 2018-06-29 08:49 | 2018-07-20 08:49 | 1 |  |  | 2018-03-01 09:00 | 2018-07-20 08:49 | 92.98d | 0d |  |  | 240h |  | 2,780 | 5,550 |  |
| 17 | 5.1.1 | Interface programming |  | 3w | 2018-06-29 08:49 | 2018-07-20 08:49 | 6, 12 |  |  | 2018-06-29 08:49 | 2018-07-20 08:49 | 3w | 0d |  | Programmer #3; Programmer #4 | 240h |  | 1,780 | 1,780 |  |
| 18 | 5.2 | **Building base objects** |  | 72.88d | 2018-04-10 15:49 A | 2018-07-30 14:49 |  | 14% | 62.77d | 2018-03-26 13:00 | 2018-08-01 15:49 | 86.35d | 18.38d |  |  | 2640h | 271.91h | 7,630 | 9,530 | 1,313.82 |
| 19 | 5.2.1 | Programming facilities for base objects |  | 3w | 2018-04-10 15:49 A | 2018-05-04 15:49 | 3 | 40% | 1.8w | 2018-04-10 15:49 | 2018-05-04 15:49 | 3w | 20.65d | 0d | Programmer #3; Programmer #4 | 240h | 96h | 1,780 | 1,780 | 772 |
| 20 | 5.2.2 | Complete base objects |  | 12w | 2018-04-20 09:00 A | 2018-07-30 14:49 | 19 | 7% | 11.12w | 2018-05-04 15:49 | 2018-08-01 15:49 | 12w | 18.38d |  | Dataworker #1; Dataworker #2; Dataworker #3; Dataworker #4; Dataworker #5 | 2400h | 175.91h | 4,850 | 4,850 | 401.82 |
| 21 | 6 | **Website creation and support** |  | 21.5d | 2018-07-06 08:49 | 2018-08-06 13:49 |  |  |  | 2018-07-10 08:49 | 2018-08-10 14:49 | 23.62d | 0d |  |  | 128h |  | 996 | 2,106 |  |
| 22 | 6.1 | Developing site's structure |  | 1d | 2018-07-06 08:49 | 2018-07-09 08:49 | 31SS |  |  | 2018-07-10 08:49 | 2018-07-11 08:49 | 1d | 0d |  | Web-designer | 8h |  | 106 | 106 |  |
| 23 | 6.2 | Complete site |  | 3w | 2018-07-16 09:49 | 2018-08-06 13:49 | 11 |  |  | 2018-07-20 10:49 | 2018-08-10 14:49 | 3w | 0d |  | Web-designer | 120h |  | 890 | 890 |  |
| 24 | 7 | **Testing** |  | 92.5d | 2018-04-09 13:49 A | 2018-08-24 08:49 |  | 6% | 87.18d |  |  |  | 0d |  |  | 520h | 40h | 4,420 |  | 480 |
| 25 | 7.1 | Testing kernel model |  | 0.25w | 2018-04-09 13:49 A | 2018-04-10 15:49 A | 13 | 100% |  | 2018-04-09 13:49 | 2018-04-10 15:49 | 0.25w |  |  | Programmer #1; Programmer #2; Programmer #3; Programmer #4 | 40h | 40h | 480 | 480 | 480 |
| 26 | 7.2 | Testing site |  | 4.1w | 2018-07-26 13:49 | 2018-08-24 08:49 | 21FS-7d |  |  | 2018-08-01 14:49 | 2018-08-30 09:49 | 4.1w | 0d |  | Leader; Programmer #1; Programmer #2 | 480h |  | 3,940 | 4,040 |  |

| ID | WBS | Task | Type | Duration | Start | Finish | Predecessors | Complete | Remaining | Baseline start | Baseline finish | Baseline duration | Total slack | Constraint | Resources | Work | Actual work | Cost | Baseline cost | Actual cost |
| --- | --- | --- | --- | --- | --- | --- | --- | --- | --- | --- | --- | --- | --- | --- | --- | --- | --- | --- | --- | --- |
| 27 | 8 | **Documentation** |  | 82.98d | 2018-04-09 15:00 A | 2018-08-10 14:49 |  | 33% | 55.82d |  |  |  | 9.38d |  |  | 440h | 144h | 1,780 |  | 452 |
| 28 | 8.1 | Complete multimedia |  | 6w | 2018-04-09 15:00 A | 2018-05-28 11:00 | 6 | 60% | 2.4w | 2018-04-09 15:00 | 2018-05-28 11:00 | 6w | 61.73d |  | Multimedia correspondent | 240h | 144h | 740 | 740 | 452 |
| 29 | 8.2 | Creating Help system |  | 2w | 2018-07-27 11:49 | 2018-08-10 14:49 | 17 |  |  | 2018-07-31 11:49 | 2018-08-14 14:49 | 2w | 9.38d |  | Technical writer | 80h |  | 420 | 420 |  |
| 30 | 8.3 | **Creating User's guide** |  | 15.38d | 2018-07-06 08:49 | 2018-07-27 11:49 | 17FS-10d |  |  | 2018-07-06 08:49 | 2018-07-31 11:49 | 17.38d | 0d |  |  | 120h |  | 620 | 1,010 |  |
| 31 | 8.3.1 | Writing User's Guide |  | 3w | 2018-07-06 08:49 | 2018-07-27 11:49 | 10SS+2d |  |  | 2018-07-10 08:49 | 2018-07-31 11:49 | 3w | 0d |  | Technical writer | 120h |  | 620 | 620 |  |
| 32 | 9 | Site commission - finish | milestone | 0d | 2018-08-24 08:49 | 2018-08-24 08:49 | 26 |  |  | 2018-08-30 09:49 | 2018-08-30 09:49 | 0d | 0d |  |  |  |  |  |  |  |
| 33 | 10 | **Project meetings** |  | 112.12d | 2018-03-07 09:00 A | 2018-08-22 10:00 |  | 35% | 73.12d | 2018-03-07 09:00 | 2018-08-29 10:00 | 117.12d | 1.85d |  |  | 161h | 56h | 1,403 | 1,464 | 488 |
| 34 | 10.1 | Project meetings 1 |  | 1h | 2018-03-07 09:00 A | 2018-03-07 10:00 A |  | 100% |  | 2018-03-07 09:00 | 2018-03-07 10:00 | 1h |  | start no earlier than 2018-03-07 09:00 | 3D animator; Designer; Leader; Multimedia correspondent; System Analyst; Technical writer; Web-designer | 7h | 7h | 61 | 61 | 61 |
| 35 | 10.2 | Project meetings 2 |  | 1h | 2018-03-14 09:00 A | 2018-03-14 10:00 A |  | 100% |  | 2018-03-14 09:00 | 2018-03-14 10:00 | 1h |  | start no earlier than 2018-03-14 09:00 | 3D animator; Designer; Leader; Multimedia correspondent; System Analyst; Technical writer; Web-designer | 7h | 7h | 61 | 61 | 61 |
| 36 | 10.3 | Project meetings 3 |  | 1h | 2018-03-21 09:00 A | 2018-03-21 10:00 A |  | 100% |  | 2018-03-21 09:00 | 2018-03-21 10:00 | 1h |  | start no earlier than 2018-03-21 09:00 | 3D animator; Designer; Leader; Multimedia correspondent; System Analyst; Technical writer; Web-designer | 7h | 7h | 61 | 61 | 61 |
| 37 | 10.4 | Project meetings 4 |  | 1h | 2018-03-28 09:00 A | 2018-03-28 10:00 A |  | 100% |  | 2018-03-28 09:00 | 2018-03-28 10:00 | 1h |  | start no earlier than 2018-03-28 09:00 | 3D animator; Designer; Leader; Multimedia correspondent; System Analyst; Technical writer; Web-designer | 7h | 7h | 61 | 61 | 61 |
| 38 | 10.5 | Project meetings 5 |  | 1h | 2018-04-04 09:00 A | 2018-04-04 10:00 A |  | 100% |  | 2018-04-04 09:00 | 2018-04-04 10:00 | 1h |  | start no earlier than 2018-04-04 09:00 | 3D animator; Designer; Leader; Multimedia correspondent; System Analyst; Technical writer; Web-designer | 7h | 7h | 61 | 61 | 61 |
| 39 | 10.6 | Project meetings 6 |  | 1h | 2018-04-11 09:00 A | 2018-04-11 10:00 A |  | 100% |  | 2018-04-11 09:00 | 2018-04-11 10:00 | 1h |  | start no earlier than 2018-04-11 09:00 | 3D animator; Designer; Leader; Multimedia correspondent; System Analyst; Technical writer; Web-designer | 7h | 7h | 61 | 61 | 61 |
| 40 | 10.7 | Project meetings 7 |  | 1h | 2018-04-18 09:00 A | 2018-04-18 10:00 A |  | 100% |  | 2018-04-18 09:00 | 2018-04-18 10:00 | 1h |  | start no earlier than 2018-04-18 09:00 | 3D animator; Designer; Leader; Multimedia correspondent; System Analyst; Technical writer; Web-designer | 7h | 7h | 61 | 61 | 61 |
| 41 | 10.8 | Project meetings 8 |  | 1h | 2018-04-25 09:00 A | 2018-04-25 10:00 A |  | 100% |  | 2018-04-25 09:00 | 2018-04-25 10:00 | 1h |  | start no earlier than 2018-04-25 09:00 | 3D animator; Designer; Leader; Multimedia correspondent; System Analyst; Technical writer; Web-designer | 7h | 7h | 61 | 61 | 61 |
| 42 | 10.9 | Project meetings 9 |  | 1h | 2018-05-16 09:00 | 2018-05-16 10:00 |  |  |  | 2018-05-16 09:00 | 2018-05-16 10:00 | 1h | 69.85d | start no earlier than 2018-05-16 09:00 | 3D animator; Designer; Leader; Multimedia correspondent; System Analyst; Technical writer; Web-designer | 7h |  | 61 | 61 |  |
| 43 | 10.10 | Project meetings 10 |  | 1h | 2018-05-23 09:00 | 2018-05-23 10:00 |  |  |  | 2018-05-23 09:00 | 2018-05-23 10:00 | 1h | 64.85d | start no earlier than 2018-05-23 09:00 | 3D animator; Designer; Leader; Multimedia correspondent; System Analyst; Technical writer; Web-designer | 7h |  | 61 | 61 |  |
| 44 | 10.11 | Project meetings 11 |  | 1h | 2018-05-30 09:00 | 2018-05-30 10:00 |  |  |  | 2018-05-30 09:00 | 2018-05-30 10:00 | 1h | 59.85d | start no earlier than 2018-05-30 09:00 | 3D animator; Designer; Leader; Multimedia correspondent; System Analyst; Technical writer; Web-designer | 7h |  | 61 | 61 |  |
| 45 | 10.12 | Project meetings 12 |  | 1h | 2018-06-06 09:00 | 2018-06-06 10:00 |  |  |  | 2018-06-06 09:00 | 2018-06-06 10:00 | 1h | 54.85d | start no earlier than 2018-06-06 09:00 | 3D animator; Designer; Leader; Multimedia correspondent; System Analyst; Technical writer; Web-designer | 7h |  | 61 | 61 |  |
| 46 | 10.13 | Project meetings 13 |  | 1h | 2018-06-13 09:00 | 2018-06-13 10:00 |  |  |  | 2018-06-13 09:00 | 2018-06-13 10:00 | 1h | 51.85d | start no earlier than 2018-06-13 09:00 | 3D animator; Designer; Leader; Multimedia correspondent; System Analyst; Technical writer; Web-designer | 7h |  | 61 | 61 |  |
| 47 | 10.14 | Project meetings 14 |  | 1h | 2018-06-20 09:00 | 2018-06-20 10:00 |  |  |  | 2018-06-20 09:00 | 2018-06-20 10:00 | 1h | 46.85d | start no earlier than 2018-06-20 09:00 | 3D animator; Designer; Leader; Multimedia correspondent; System Analyst; Technical writer; Web-designer | 7h |  | 61 | 61 |  |
| 48 | 10.15 | Project meetings 15 |  | 1h | 2018-06-27 09:00 | 2018-06-27 10:00 |  |  |  | 2018-06-27 09:00 | 2018-06-27 10:00 | 1h | 41.85d | start no earlier than 2018-06-27 09:00 | 3D animator; Designer; Leader; Multimedia correspondent; System Analyst; Technical writer; Web-designer | 7h |  | 61 | 61 |  |
| 49 | 10.16 | Project meetings 16 |  | 1h | 2018-07-04 09:00 | 2018-07-04 10:00 |  |  |  | 2018-07-04 09:00 | 2018-07-04 10:00 | 1h | 36.85d | start no earlier than 2018-07-04 09:00 | 3D animator; Designer; Leader; Multimedia correspondent; System Analyst; Technical writer; Web-designer | 7h |  | 61 | 61 |  |
| 50 | 10.17 | Project meetings 17 |  | 1h | 2018-07-11 09:00 | 2018-07-11 10:00 |  |  |  | 2018-07-11 09:00 | 2018-07-11 10:00 | 1h | 31.85d | start no earlier than 2018-07-11 09:00 | 3D animator; Designer; Leader; Multimedia correspondent; System Analyst; Technical writer; Web-designer | 7h |  | 61 | 61 |  |
| 51 | 10.18 | Project meetings 18 |  | 1h | 2018-07-18 09:00 | 2018-07-18 10:00 |  |  |  | 2018-07-18 09:00 | 2018-07-18 10:00 | 1h | 26.85d | start no earlier than 2018-07-18 09:00 | 3D animator; Designer; Leader; Multimedia correspondent; System Analyst; Technical writer; Web-designer | 7h |  | 61 | 61 |  |
| 52 | 10.19 | Project meetings 19 |  | 1h | 2018-07-25 09:00 | 2018-07-25 10:00 |  |  |  | 2018-07-25 09:00 | 2018-07-25 10:00 | 1h | 21.85d | start no earlier than 2018-07-25 09:00 | 3D animator; Designer; Leader; Multimedia correspondent; System Analyst; Technical writer; Web-designer | 7h |  | 61 | 61 |  |
| 53 | 10.20 | Project meetings 20 |  | 1h | 2018-08-01 09:00 | 2018-08-01 10:00 |  |  |  | 2018-08-01 09:00 | 2018-08-01 10:00 | 1h | 16.85d | start no earlier than 2018-08-01 09:00 | 3D animator; Designer; Leader; Multimedia correspondent; System Analyst; Technical writer; Web-designer | 7h |  | 61 | 61 |  |
| 54 | 10.21 | Project meetings 21 |  | 1h | 2018-08-08 09:00 | 2018-08-08 10:00 |  |  |  | 2018-08-08 09:00 | 2018-08-08 10:00 | 1h | 11.85d | start no earlier than 2018-08-08 09:00 | 3D animator; Designer; Leader; Multimedia correspondent; System Analyst; Technical writer; Web-designer | 7h |  | 61 | 61 |  |
| 55 | 10.22 | Project meetings 22 |  | 1h | 2018-08-15 09:00 | 2018-08-15 10:00 |  |  |  | 2018-08-15 09:00 | 2018-08-15 10:00 | 1h | 6.85d | start no earlier than 2018-08-15 09:00 | 3D animator; Designer; Leader; Multimedia correspondent; System Analyst; Technical writer; Web-designer | 7h |  | 61 | 61 |  |
| 56 | 10.23 | Project meetings 23 |  | 1h | 2018-08-22 09:00 | 2018-08-22 10:00 |  |  |  | 2018-08-22 09:00 | 2018-08-22 10:00 | 1h | 1.85d | start no earlier than 2018-08-22 09:00 | 3D animator; Designer; Leader; Multimedia correspondent; System Analyst; Technical writer; Web-designer | 7h |  | 61 | 61 |  |
